# 项目计划

Schedule from MS Project, 2017-11-08 to 2018-02-06, costs in ¥.

## Calendars

- 标准: Mon-Fri 08:00-12:00, 13:00-17:00; Sat-Sun off. Exceptions (off unless hours are given): 2018-01-01 (元旦).

## Resources

| Resource | Rate |
| --- | --- |
| 张宇 | 46 |
| 刘毅博 | 46 |
| 主控板 | 800 |
| 扩展板 | 100 |

## Schedule

| ID | WBS | Task | Duration | Start | Finish | Predecessors | Total slack | Free slack | Constraint | Resources | Work | Cost |
| --- | --- | --- | --- | --- | --- | --- | --- | --- | --- | --- | --- | --- |
| 1 | 1 | **策划阶段** | 7d | 2017-11-08 | 2017-11-17 |  |  |  |  |  | 56h | 2,576 |
| 2 | 1.1 | 可行性分析报告 | 5d | 2017-11-08 | 2017-11-15 |  | 0d |  |  | 张宇 | 40h | 1,840 |
| 3 | 1.2 | 项目计划书 | 2d | 2017-11-15 | 2017-11-17 | 2 | 0d |  |  | 张宇 | 16h | 736 |
| 4 | 2 | **实施阶段** | 51.88d | 2017-11-17 | 2018-01-30 | 1 | 0d |  |  |  | 488h | 23,348 |
| 5 | 2.1 | **详细设计** | 12d | 2017-11-17 | 2017-12-05 |  | 25.88d | 0d |  |  | 96h | 4,416 |
| 6 | 2.1.1 | 后台设计 | 5d | 2017-11-17 | 2017-11-24 | 3 | 25.88d | 0d |  | 张宇 | 40h | 1,840 |
| 7 | 2.1.2 | 接口设计 | 3d | 2017-11-24 | 2017-11-29 | 6 | 25.88d | 0d |  | 张宇 | 24h | 1,104 |
| 8 | 2.1.3 | UI设计 | 4d | 2017-11-29 | 2017-12-05 | 7 | 25.88d | 17.88d |  | 张宇 | 32h | 1,472 |
| 9 | 2.2 | **开发** | 35.88d | 2017-12-05 | 2018-01-24 |  | 3d | 0d |  |  | 280h | 12,880 |
| 10 | 2.2.1 | **后台开发** | 17.88d | 2017-12-05 | 2017-12-28 | 6, 5 | 13d | 0d |  |  | 136h | 6,256 |
| 11 | 2.2.1.1 | IO模块 | 2d | 2017-12-05 | 2017-12-07 |  | 28.88d | 0d |  | 张宇 | 16h | 736 |
| 12 | 2.2.1.2 | ModBus模块 | 2d | 2017-12-07 | 2017-12-11 |  | 26.88d | 0d | start no earlier than 2017-12-07 | 张宇 | 16h | 736 |
| 13 | 2.2.1.3 | OPC模块 | 5d | 2017-12-12 | 2017-12-18 |  | 21d | 0d | start no earlier than 2017-12-12 | 张宇 | 40h | 1,840 |
| 14 | 2.2.1.4 | 串口模块 | 3d | 2017-12-19 | 2017-12-21 |  | 18d | 2d | start no earlier than 2017-12-19 | 张宇 | 24h | 1,104 |
| 15 | 2.2.1.5 | 扩展接口(接口数量超过16个) | 5d | 2017-12-22 | 2017-12-28 |  | 13d |  | start no earlier than 2017-12-22 | 张宇 | 40h | 1,840 |
| 16 | 2.2.2 | **前端开发** | 18d | 2017-12-29 | 2018-01-24 | 8, 10 | 3d | 0d |  |  | 144h | 6,624 |
| 17 | 2.2.2.1 | **手工配置** | 8d | 2018-01-08 | 2018-01-17 | 8 | 3d | 0d |  |  | 64h | 2,944 |
| 18 | 2.2.2.1.1 | ModBus模块配置 | 2d | 2018-01-08 | 2018-01-09 |  | 9d |  | start no earlier than 2018-01-08 | 张宇 | 16h | 736 |
| 19 | 2.2.2.1.2 | IO模块配置 | 1d | 2018-01-10 | 2018-01-10 |  | 8d |  | start no earlier than 2018-01-10 | 张宇 | 8h | 368 |
| 20 | 2.2.2.1.3 | OPC模块配置 | 3d | 2018-01-11 | 2018-01-15 |  | 5d |  | start no earlier than 2018-01-11 | 张宇 | 24h | 1,104 |
| 21 | 2.2.2.1.4 | 串口配置 | 1d | 2018-01-16 | 2018-01-16 |  | 4d |  | start no earlier than 2018-01-16 | 张宇 | 8h | 368 |
| 22 | 2.2.2.1.5 | 扩展接口配置 | 1d | 2018-01-17 | 2018-01-17 |  | 3d |  | start no earlier than 2018-01-17 | 张宇 | 8h | 368 |
| 23 | 2.2.2.2 | 配置向导 | 5d | 2018-01-18 | 2018-01-24 | 17 | 3d |  | start no earlier than 2018-01-09 | 张宇 | 40h | 1,840 |
| 24 | 2.2.2.3 | 实时监控 | 5d | 2017-12-29 | 2018-01-05 | 7 | 16d |  | start no earlier than 2017-12-29 | 张宇 | 40h | 1,840 |

| ID | WBS | Task | Duration | Start | Finish | Predecessors | Total slack | Constraint | Resources | Work | Cost |
| --- | --- | --- | --- | --- | --- | --- | --- | --- | --- | --- | --- |
| 25 | 2.3 | **系统联调** | 37.88d | 2017-12-07 | 2018-01-30 |  | 0d |  |  | 112h | 6,052 |
| 26 | 2.3.1 | 采购测试设备 | 1d | 2018-01-25 | 2018-01-25 | 9 | 3d |  | 扩展板; 主控板 |  | 900 |
| 27 | 2.3.2 | **Modbus测试** | 3.38d | 2017-12-11 | 2017-12-14 | 12 | 32.5d |  |  | 20h | 920 |
| 28 | 2.3.2.1 | Modbus配置 | 0.5d | 2017-12-14 | 2017-12-14 |  | 32.5d | start no earlier than 2017-12-14 | 刘毅博 | 4h | 184 |
| 29 | 2.3.2.2 | ModBusTCP | 1d | 2017-12-11 | 2017-12-12 |  | 34.88d |  | 刘毅博 | 8h | 368 |
| 30 | 2.3.2.3 | ModBusRTU | 1d | 2017-12-13 | 2017-12-13 |  | 33d | start no earlier than 2017-12-13 | 刘毅博 | 8h | 368 |
| 31 | 2.3.3 | IO接口循环测试 | 0.5d | 2017-12-07 | 2017-12-07 | 11 | 37.38d |  | 刘毅博 | 4h | 184 |
| 32 | 2.3.4 | **串口测试** | 2d | 2017-12-26 | 2017-12-27 | 14 | 23d |  |  | 16h | 736 |
| 33 | 2.3.4.1 | 串口协议速率 | 1d | 2017-12-26 | 2017-12-26 | 14 | 24d | start no earlier than 2017-12-26 | 刘毅博 | 8h | 368 |
| 34 | 2.3.4.2 | 串口ASCII方式通信(模拟激光器) | 1d | 2017-12-27 | 2017-12-27 |  | 23d | start no earlier than 2017-12-27 | 刘毅博 | 8h | 368 |
| 35 | 2.3.5 | **OPCUA测试** | 5d | 2017-12-19 | 2017-12-25 | 13 | 25d |  |  | 40h | 1,840 |
| 36 | 2.3.5.1 | 配置 | 1d | 2017-12-19 | 2017-12-19 |  | 29d |  | 刘毅博 | 8h | 368 |
| 37 | 2.3.5.2 | PLC | 1d | 2017-12-20 | 2017-12-20 |  | 28d | start no earlier than 2017-12-20 | 刘毅博 | 8h | 368 |
| 38 | 2.3.5.3 | 控制器 | 1d | 2017-12-21 | 2017-12-21 |  | 27d | start no earlier than 2017-12-21 | 刘毅博 | 8h | 368 |
| 39 | 2.3.5.4 | 事件 | 1d | 2017-12-22 | 2017-12-22 |  | 26d | start no earlier than 2017-12-22 | 刘毅博 | 8h | 368 |
| 40 | 2.3.5.5 | IO | 1d | 2017-12-25 | 2017-12-25 |  | 25d | start no earlier than 2017-12-25 | 刘毅博 | 8h | 368 |
| 41 | 2.3.6 | **界面功能测试** | 4d | 2018-01-25 | 2018-01-30 | 16 | 0d |  |  | 32h | 1,472 |
| 42 | 2.3.6.1 | Modbus | 1d | 2018-01-25 | 2018-01-25 |  | 3d |  | 刘毅博 | 8h | 368 |
| 43 | 2.3.6.2 | 串口 | 1d | 2018-01-26 | 2018-01-26 |  | 2d | start no earlier than 2018-01-26 | 刘毅博 | 8h | 368 |
| 44 | 2.3.6.3 | OPCUA | 1d | 2018-01-29 | 2018-01-29 |  | 1d | start no earlier than 2018-01-29 | 刘毅博 | 8h | 368 |
| 45 | 2.3.6.4 | IO | 1d | 2018-01-30 | 2018-01-30 |  | 0d | start no earlier than 2018-01-30 | 刘毅博 | 8h | 368 |
| 46 | 3 | **收尾阶段** | 5d | 2018-01-31 | 2018-02-06 | 4 | 0d |  |  | 64h | 2,944 |
| 47 | 3.1 | 总结报告 | 4d | 2018-01-31 | 2018-02-05 |  | 0d |  | 张宇; 刘毅博 | 64h | 2,944 |
| 48 | 3.2 | 验收 | 1d | 2018-02-06 | 2018-02-06 | 47 | 0d |  |  |  |  |
